# Software Development

Schedule from MS Project, 2014-10-27 to 2015-05-01.

## Calendars

- Standard: Mon-Fri 08:00-12:00, 13:00-17:00; Sat-Sun off.

## Resources

| Resource |
| --- |
| Kadra zarządzająca |
| Project Manager |
| Analityk |
| Deweloper |
| Testerzy |
| Trenerzy |
| Pomoc/Helpdesk |
| Deployment |

## Schedule

| ID | WBS | Task | Type | Duration | Start | Finish | Predecessors | Total slack | Free slack | Resources | Work | Sprint |
| --- | --- | --- | --- | --- | --- | --- | --- | --- | --- | --- | --- | --- |
| 1 | 1 | **Analiza, ustalenie wymagań** |  | 15d | 2014-10-27 | 2014-11-14 |  |  |  |  | 120h |  |
| 2 | 1.1 | Conduct needs analysis |  | 5d | 2014-10-27 | 2014-10-31 |  | 1d | 0d | Analityk | 40h |  |
| 3 | 1.2 | Draft preliminary software specifications |  | 3d | 2014-11-03 | 2014-11-05 | 2 | 1d | 0d | Analityk | 24h |  |
| 4 | 1.3 | Develop preliminary budget |  | 2d | 2014-11-06 | 2014-11-07 | 3 | 1d | 0d | Project Manager | 16h |  |
| 5 | 1.4 | Review software specifications/budget with team |  | 4h | 2014-11-10 | 2014-11-10 | 4 | 1d | 0d | Project Manager; Analityk | 8h |  |
| 6 | 1.5 | Incorporate feedback on software specifications |  | 1d | 2014-11-10 | 2014-11-11 | 5 | 1d | 0d | Analityk | 8h |  |
| 7 | 1.6 | Develop delivery timeline |  | 1d | 2014-11-11 | 2014-11-12 | 6 | 1d | 0d | Project Manager | 8h |  |
| 8 | 1.7 | Obtain approvals to proceed (concept, timeline, budget) |  | 4h | 2014-11-12 | 2014-11-12 | 7 | 1d | 0d | Kadra zarządzająca; Project Manager | 8h |  |
| 9 | 1.8 | Secure required resources |  | 1d | 2014-11-13 | 2014-11-13 | 8 | 1d | 0d | Project Manager | 8h |  |
| 10 | 1.9 | Analysis complete | milestone | 0d | 2014-11-13 | 2014-11-13 | 9 | 1d | 0d |  |  |  |
| 11 | 2 | **Projektowanie** |  | 14.5d | 2014-11-14 | 2014-12-04 |  | 57.5d |  |  | 120h |  |
| 12 | 2.1 | Review preliminary software specifications |  | 2d | 2014-11-14 | 2014-11-17 | 10 | 54.5d | 0d | Analityk | 16h |  |
| 13 | 2.2 | Develop functional specifications |  | 5d | 2014-11-18 | 2014-11-24 | 12 | 54.5d | 0d | Analityk | 40h |  |
| 14 | 2.3 | Develop prototype based on functional specifications |  | 4d | 2014-11-25 | 2014-11-28 | 13 | 54.5d | 0d | Analityk | 32h |  |
| 15 | 2.4 | Review functional specifications |  | 2d | 2014-12-01 | 2014-12-02 | 14 | 54.5d | 0d | Kadra zarządzająca | 16h |  |
| 16 | 2.5 | Incorporate feedback into functional specifications |  | 1d | 2014-12-03 | 2014-12-03 | 15 | 54.5d | 0d | Kadra zarządzająca | 8h |  |
| 17 | 2.6 | Obtain approval to proceed |  | 4h | 2014-12-04 | 2014-12-04 | 16 | 54.5d | 0d | Kadra zarządzająca; Project Manager | 8h |  |
| 18 | 2.7 | Design complete | milestone | 0d | 2014-12-04 | 2014-12-04 | 17 | 54.5d | 0d |  |  |  |
| 19 | 3 | **Implemementacja** |  | 21.75d | 2014-12-04 | 2015-01-05 |  | 57.5d |  |  | 264h | Sprint 1 |
| 20 | 3.1 | Review functional specifications |  | 1d | 2014-12-04 | 2014-12-05 | 18 | 57.5d | 0d | Deweloper | 8h |  |
| 21 | 3.2 | Identify modular/tiered design parameters |  | 1d | 2014-12-05 | 2014-12-08 | 20 | 57.5d | 0d | Deweloper | 8h | Sprint 1 |
| 22 | 3.3 | Assign development staff |  | 1d | 2014-12-08 | 2014-12-09 | 21 | 57.5d | 0d | Deweloper | 8h | Sprint 1 |
| 23 | 3.4 | Develop code |  | 15d | 2014-12-09 | 2014-12-30 | 22 | 57.5d | 0d | Deweloper | 120h | Sprint 1 |
| 24 | 3.5 | Developer testing (primary debugging) |  | 15d | 2014-12-15 | 2015-01-05 | 23FS-7.5% | 57.5d | 0d | Deweloper | 120h | Sprint 1 |
| 25 | 3.6 | Development complete | milestone | 0d | 2015-01-05 | 2015-01-05 | 24 | 57.5d | 0d |  |  | Sprint 1 |

| ID | WBS | Task | Type | Duration | Start | Finish | Predecessors | Total slack | Free slack | Resources | Work | Sprint |
| --- | --- | --- | --- | --- | --- | --- | --- | --- | --- | --- | --- | --- |
| 26 | 4 | **Testowanie** |  | 48.75d | 2014-12-04 | 2015-02-11 |  | 57.5d |  |  | 280h | Sprint 1 |
| 27 | 4.1 | Develop unit test plans using product specifications |  | 4d | 2014-12-04 | 2014-12-10 | 18 | 75.25d | 17.75d | Testerzy | 32h | Sprint 1 |
| 28 | 4.2 | Develop integration test plans using product specifications |  | 4d | 2014-12-04 | 2014-12-10 | 18 | 102.25d |  | Testerzy | 32h | Sprint 1 |
| 29 | 4.3 | **Testy jednostkowe** |  | 15d | 2015-01-05 | 2015-01-26 |  | 57.5d |  |  | 120h | Sprint 1 |
| 30 | 4.3.1 | Review modular code |  | 5d | 2015-01-05 | 2015-01-12 | 27, 25 | 57.5d | 0d | Testerzy | 40h | Sprint 1 |
| 31 | 4.3.2 | Test component modules to product specifications |  | 2d | 2015-01-12 | 2015-01-14 | 25, 30 | 57.5d | 0d | Testerzy | 16h | Sprint 1 |
| 32 | 4.3.3 | Identify anomalies to product specifications |  | 3d | 2015-01-14 | 2015-01-19 | 31 | 57.5d | 0d | Testerzy | 24h | Sprint 1 |
| 33 | 4.3.4 | Modify code |  | 3d | 2015-01-19 | 2015-01-22 | 32 | 57.5d | 0d | Testerzy | 24h | Sprint 1 |
| 34 | 4.3.5 | Re-test modified code |  | 2d | 2015-01-22 | 2015-01-26 | 33 | 57.5d | 0d | Testerzy | 16h | Sprint 1 |
| 35 | 4.3.6 | Unit testing complete | milestone | 0d | 2015-01-26 | 2015-01-26 | 34 | 57.5d | 0d |  |  | Sprint 1 |
| 36 | 4.4 | **Testy integracyjne** |  | 12d | 2015-01-26 | 2015-02-11 |  | 57.5d |  |  | 96h | Sprint 1 |
| 37 | 4.4.1 | Test module integration |  | 5d | 2015-01-26 | 2015-02-02 | 35 | 57.5d | 0d | Testerzy | 40h | Sprint 1 |
| 38 | 4.4.2 | Identify anomalies to specifications |  | 2d | 2015-02-02 | 2015-02-04 | 37 | 57.5d | 0d | Testerzy | 16h | Sprint 1 |
| 39 | 4.4.3 | Modify code |  | 3d | 2015-02-04 | 2015-02-09 | 38 | 57.5d | 0d | Testerzy | 24h | Sprint 1 |
| 40 | 4.4.4 | Re-test modified code |  | 2d | 2015-02-09 | 2015-02-11 | 39 | 57.5d | 0d | Testerzy | 16h | Sprint 1 |
| 41 | 4.4.5 | Integration testing complete | milestone | 0d | 2015-02-11 | 2015-02-11 | 40 | 57.5d |  |  |  | Sprint 1 |
| 42 | 5 | **Dokumentacja** |  | 30.5d | 2014-12-04 | 2015-01-15 |  | 75.75d |  |  | 672h | Sprint 1 |
| 43 | 5.1 | **Dokumentacja** |  | 30.5d | 2014-12-04 | 2015-01-15 |  | 75.75d |  |  | 336h | Sprint 1 |
| 44 | 5.1.1 | Develop Help specification |  | 1d | 2014-12-04 | 2014-12-05 | 18 | 85.25d | 9.5d | Pomoc/Helpdesk | 8h | Sprint 1 |
| 45 | 5.1.2 | Develop Help system |  | 3w | 2014-12-19 | 2015-01-08 | 44, 23FS-5% | 75.75d | 0d | Pomoc/Helpdesk | 120h | Sprint 1 |
| 46 | 5.1.3 | Review Help documentation |  | 3d | 2015-01-09 | 2015-01-13 | 45 | 75.75d | 0d | Pomoc/Helpdesk | 24h | Sprint 1 |
| 47 | 5.1.4 | Incorporate Help documentation feedback |  | 2d | 2015-01-14 | 2015-01-15 | 46 | 75.75d | 0d | Pomoc/Helpdesk | 16h | Sprint 1 |
| 48 | 5.1.5 | Develop user manuals specifications |  | 2d | 2014-12-04 | 2014-12-08 | 18 | 85.25d | 8.5d | Pomoc/Helpdesk | 16h | Sprint 1 |
| 49 | 5.1.6 | Develop user manuals |  | 3w | 2014-12-19 | 2015-01-08 | 48, 23FS-5% | 76.75d | 0d | Pomoc/Helpdesk | 120h | Sprint 1 |
| 50 | 5.1.7 | Review all user documentation |  | 2d | 2015-01-09 | 2015-01-12 | 49 | 76.75d | 0d | Pomoc/Helpdesk | 16h | Sprint 1 |
| 51 | 5.1.8 | Incorporate user documentation feedback |  | 2d | 2015-01-13 | 2015-01-14 | 50 | 76.75d | 1d | Pomoc/Helpdesk | 16h | Sprint 1 |
| 52 | 5.1.9 | Documentation complete | milestone | 0d | 2015-01-15 | 2015-01-15 | 47, 51 | 75.75d |  |  |  | Sprint 1 |
| 53 | 5.2 | Develop Help specification |  | 1d | 2014-12-04 | 2014-12-05 | 18 | 85.25d | 9.5d | Pomoc/Helpdesk | 8h | Sprint 1 |
| 54 | 5.3 | Develop Help system |  | 3w | 2014-12-19 | 2015-01-08 | 53, 23FS-5% | 75.75d | 0d | Pomoc/Helpdesk | 120h | Sprint 1 |
| 55 | 5.4 | Review Help documentation |  | 3d | 2015-01-09 | 2015-01-13 | 54 | 75.75d | 0d | Pomoc/Helpdesk | 24h | Sprint 1 |
| 56 | 5.5 | Incorporate Help documentation feedback |  | 2d | 2015-01-14 | 2015-01-15 | 55 | 75.75d | 0d | Pomoc/Helpdesk | 16h | Sprint 1 |
| 57 | 5.6 | Develop user manuals specifications |  | 2d | 2014-12-04 | 2014-12-08 | 18 | 85.25d | 8.5d | Pomoc/Helpdesk | 16h | Sprint 1 |
| 58 | 5.7 | Develop user manuals |  | 3w | 2014-12-19 | 2015-01-08 | 57, 23FS-5% | 76.75d | 0d | Pomoc/Helpdesk | 120h | Sprint 1 |
| 59 | 5.8 | Review all user documentation |  | 2d | 2015-01-09 | 2015-01-12 | 58 | 76.75d | 0d | Pomoc/Helpdesk | 16h | Sprint 1 |
| 60 | 5.9 | Incorporate user documentation feedback |  | 2d | 2015-01-13 | 2015-01-14 | 59 | 76.75d | 1d | Pomoc/Helpdesk | 16h | Sprint 1 |
| 61 | 5.10 | Documentation complete | milestone | 0d | 2015-01-15 | 2015-01-15 | 60, 56 | 75.75d |  |  |  | Sprint 1 |

| ID | WBS | Task | Type | Duration | Start | Finish | Predecessors | Total slack | Free slack | Resources | Work | Sprint |
| --- | --- | --- | --- | --- | --- | --- | --- | --- | --- | --- | --- | --- |
| 62 | 6 | **Deployment** |  | 5d | 2015-02-12 | 2015-02-18 |  |  |  |  | 40h | Sprint 1 |
| 63 | 6.1 | Determine final deployment strategy |  | 1d | 2015-02-12 | 2015-02-12 |  | -35d | 0d | Deployment | 8h | Sprint 1 |
| 64 | 6.2 | Develop deployment methodology |  | 1d | 2015-02-13 | 2015-02-13 | 63 | -35d | 0d | Deployment | 8h | Sprint 1 |
| 65 | 6.3 | Secure deployment resources |  | 1d | 2015-02-16 | 2015-02-16 | 64 | -35d | 0d | Deployment | 8h | Sprint 1 |
| 66 | 6.4 | Train support staff |  | 1d | 2015-02-17 | 2015-02-17 | 65 | -35d | 0d | Deployment | 8h |  |
| 67 | 6.5 | Deploy software |  | 1d | 2015-02-18 | 2015-02-18 | 66 | -35d | 0d | Deployment | 8h |  |
| 68 | 6.6 | Deployment complete | milestone | 0d | 2015-02-18 | 2015-02-18 | 67 | -35d | 0d |  |  |  |
| 69 | 7 | **Post Implementation Review** |  | 3d | 2015-02-19 | 2015-02-23 |  | 0d |  |  | 24h |  |
| 70 | 7.1 | Document lessons learned |  | 1d | 2015-02-19 | 2015-02-19 | 68, 124 | -35d | 0d | Project Manager | 8h |  |
| 71 | 7.2 | Distribute to team members |  | 1d | 2015-02-20 | 2015-02-20 | 70 | -35d | 0d | Project Manager | 8h |  |
| 72 | 7.3 | Create software maintenance team |  | 1d | 2015-02-23 | 2015-02-23 | 71 | -35d | 0d | Project Manager | 8h |  |
| 73 | 7.4 | Post implementation review complete | milestone | 0d | 2015-02-23 | 2015-02-23 | 72 | -35d | 0d |  |  |  |
| 74 | 8 | Sprint 1 Complete | milestone | 0d | 2015-02-23 | 2015-02-23 | 73 | -35d | 0d |  |  | Sprint1 |
| 75 | 9 | **Implemementacja** |  | 21.75d | 2015-02-24 | 2015-03-25 |  | 0d |  |  | 264h | Sprint 2 |
| 76 | 9.1 | Review functional specifications |  | 1d | 2015-02-24 | 2015-02-24 | 74 | -35d | 0d | Deweloper | 8h | Sprint 2 |
| 77 | 9.2 | Identify modular/tiered design parameters |  | 1d | 2015-02-25 | 2015-02-25 | 76 | -35d | 0d | Deweloper | 8h | Sprint 2 |
| 78 | 9.3 | Assign development staff |  | 1d | 2015-02-26 | 2015-02-26 | 77 | 0d |  | Deweloper | 8h | Sprint 2 |
| 79 | 9.4 | Develop code |  | 15d | 2015-02-27 | 2015-03-19 | 78 | -35d | 0d | Deweloper | 120h | Sprint 2 |
| 80 | 9.5 | Developer testing (primary debugging) |  | 15d | 2015-03-04 | 2015-03-25 | 79FS-7.5% | 0d |  | Deweloper | 120h | Sprint 2 |
| 81 | 9.6 | Development complete | milestone | 0d | 2015-03-25 | 2015-03-25 | 80 | -35d | 0d |  |  | Sprint 2 |
| 82 | 10 | **Testowanie** |  | 48.75d | 2015-02-24 | 2015-05-01 |  | 0d |  |  | 280h | Sprint 2 |
| 83 | 10.1 | Develop unit test plans using product specifications |  | 4d | 2015-02-24 | 2015-02-27 | 74 | 5.25d |  | Testerzy | 32h | Sprint 2 |
| 84 | 10.2 | Develop integration test plans using product specifications |  | 4d | 2015-02-24 | 2015-02-27 | 74 | 32.25d |  | Testerzy | 32h | Sprint 2 |
| 85 | 10.3 | **Testy jednostkowe** |  | 15d | 2015-03-25 | 2015-04-15 |  | 0d |  |  | 120h | Sprint 2 |
| 86 | 10.3.1 | Review modular code |  | 5d | 2015-03-25 | 2015-04-01 | 81, 83 | -12.5d | 0d | Testerzy | 40h | Sprint 2 |
| 87 | 10.3.2 | Test component modules to product specifications |  | 2d | 2015-04-01 | 2015-04-03 | 81, 86 | -12.5d | 0d | Testerzy | 16h | Sprint 2 |
| 88 | 10.3.3 | Identify anomalies to product specifications |  | 3d | 2015-04-03 | 2015-04-08 | 87 | -12.5d | 0d | Testerzy | 24h | Sprint 2 |
| 89 | 10.3.4 | Modify code |  | 3d | 2015-04-08 | 2015-04-13 | 88 | -12.5d | 0d | Testerzy | 24h | Sprint 2 |
| 90 | 10.3.5 | Re-test modified code |  | 2d | 2015-04-13 | 2015-04-15 | 89 | -12.5d | 0d | Testerzy | 16h | Sprint 2 |
| 91 | 10.3.6 | Unit testing complete | milestone | 0d | 2015-04-15 | 2015-04-15 | 90 | -12.5d | 0d |  |  | Sprint 2 |

| ID | WBS | Task | Type | Duration | Start | Finish | Predecessors | Total slack | Free slack | Resources | Work | Sprint |
| --- | --- | --- | --- | --- | --- | --- | --- | --- | --- | --- | --- | --- |
| 92 | 10.4 | **Testy integracyjne** |  | 12d | 2015-04-15 | 2015-05-01 |  | 0d |  |  | 96h | Sprint 2 |
| 93 | 10.4.1 | Test module integration |  | 5d | 2015-04-15 | 2015-04-22 | 91 | -12.5d | 0d | Testerzy | 40h | Sprint 2 |
| 94 | 10.4.2 | Identify anomalies to specifications |  | 2d | 2015-04-22 | 2015-04-24 | 93 | -12.5d | 0d | Testerzy | 16h | Sprint 2 |
| 95 | 10.4.3 | Modify code |  | 3d | 2015-04-24 | 2015-04-29 | 94 | -12.5d | 0d | Testerzy | 24h | Sprint 2 |
| 96 | 10.4.4 | Re-test modified code |  | 2d | 2015-04-29 | 2015-05-01 | 95 | -12.5d | 0d | Testerzy | 16h | Sprint 2 |
| 97 | 10.4.5 | Integration testing complete | milestone | 0d | 2015-05-01 | 2015-05-01 | 96 | -12.5d | 0d |  |  | Sprint 2 |
| 98 | 11 | **Dokumentacja** |  | 88d | 2014-12-04 | 2015-04-07 |  | 18.25d |  |  | 672h | Sprint 2 |
| 99 | 11.1 | **Dokumentacja** |  | 88d | 2014-12-04 | 2015-04-07 |  | 18.25d |  |  | 336h | Sprint 2 |
| 100 | 11.1.1 | Develop Help specification |  | 1d | 2015-02-24 | 2015-02-24 | 74 | 27.75d | 9.5d | Pomoc/Helpdesk | 8h | Sprint 2 |
| 101 | 11.1.2 | Develop Help system |  | 3w | 2015-03-10 | 2015-03-31 | 79FS-5%, 100 | 18.25d | 0d | Pomoc/Helpdesk | 120h | Sprint 2 |
| 102 | 11.1.3 | Review Help documentation |  | 3d | 2015-03-31 | 2015-04-03 | 101 | 18.25d | 0d | Pomoc/Helpdesk | 24h | Sprint 2 |
| 103 | 11.1.4 | Incorporate Help documentation feedback |  | 2d | 2015-04-03 | 2015-04-07 | 102 | 18.25d | 0d | Pomoc/Helpdesk | 16h | Sprint 2 |
| 104 | 11.1.5 | Develop user manuals specifications |  | 2d | 2014-12-04 | 2014-12-08 | 18 | 85.25d | 66d | Pomoc/Helpdesk | 16h | Sprint 2 |
| 105 | 11.1.6 | Develop user manuals |  | 3w | 2015-03-10 | 2015-03-31 | 79FS-5%, 104 | 19.25d | 0d | Pomoc/Helpdesk | 120h | Sprint 2 |
| 106 | 11.1.7 | Review all user documentation |  | 2d | 2015-03-31 | 2015-04-02 | 105 | 19.25d | 0d | Pomoc/Helpdesk | 16h | Sprint 2 |
| 107 | 11.1.8 | Incorporate user documentation feedback |  | 2d | 2015-04-02 | 2015-04-06 | 106 | 19.25d | 1d | Pomoc/Helpdesk | 16h | Sprint 2 |
| 108 | 11.1.9 | Documentation complete | milestone | 0d | 2015-04-07 | 2015-04-07 | 103, 107 | 18.25d |  |  |  | Sprint 2 |
| 109 | 11.2 | Develop Help specification |  | 1d | 2015-02-24 | 2015-02-24 | 74 | 27.75d | 9.5d | Pomoc/Helpdesk | 8h | Sprint 2 |
| 110 | 11.3 | Develop Help system |  | 3w | 2015-03-10 | 2015-03-31 | 79FS-5%, 109 | 18.25d | 0d | Pomoc/Helpdesk | 120h | Sprint 2 |
| 111 | 11.4 | Review Help documentation |  | 3d | 2015-03-31 | 2015-04-03 | 110 | 18.25d | 0d | Pomoc/Helpdesk | 24h | Sprint 2 |
| 112 | 11.5 | Incorporate Help documentation feedback |  | 2d | 2015-04-03 | 2015-04-07 | 111 | 18.25d | 0d | Pomoc/Helpdesk | 16h | Sprint 2 |
| 113 | 11.6 | Develop user manuals specifications |  | 2d | 2015-02-24 | 2015-02-25 | 74 | 27.75d | 8.5d | Pomoc/Helpdesk | 16h | Sprint 2 |
| 114 | 11.7 | Develop user manuals |  | 3w | 2015-03-10 | 2015-03-31 | 79FS-5%, 113 | 19.25d | 0d | Pomoc/Helpdesk | 120h | Sprint 2 |
| 115 | 11.8 | Review all user documentation |  | 2d | 2015-03-31 | 2015-04-02 | 114 | 19.25d | 0d | Pomoc/Helpdesk | 16h | Sprint 2 |
| 116 | 11.9 | Incorporate user documentation feedback |  | 2d | 2015-04-02 | 2015-04-06 | 115 | 19.25d | 1d | Pomoc/Helpdesk | 16h | Sprint 2 |
| 117 | 11.10 | Documentation complete | milestone | 0d | 2015-04-07 | 2015-04-07 | 112, 116 | 18.25d |  |  |  | Sprint 2 |

| ID | WBS | Task | Type | Duration | Start | Finish | Predecessors | Total slack | Free slack | Resources | Work | Sprint |
| --- | --- | --- | --- | --- | --- | --- | --- | --- | --- | --- | --- | --- |
| 118 | 12 | **Deployment** |  | 5d | 2014-10-27 | 2014-10-31 |  | 78d |  |  | 40h | Sprint 2 |
| 119 | 12.1 | Determine final deployment strategy |  | 1d | 2014-10-27 | 2014-10-27 |  | 43d | 0d | Deployment | 8h | Sprint 2 |
| 120 | 12.2 | Develop deployment methodology |  | 1d | 2014-10-28 | 2014-10-28 | 119 | 43d | 0d | Deployment | 8h | Sprint 2 |
| 121 | 12.3 | Secure deployment resources |  | 1d | 2014-10-29 | 2014-10-29 | 120 | 43d | 0d | Deployment | 8h | Sprint 2 |
| 122 | 12.4 | Train support staff |  | 1d | 2014-10-30 | 2014-10-30 | 121 | 43d | 0d | Deployment | 8h | Sprint 2 |
| 123 | 12.5 | Deploy software |  | 1d | 2014-10-31 | 2014-10-31 | 122 | 43d | 0d | Deployment | 8h | Sprint 2 |
| 124 | 12.6 | Deployment complete | milestone | 0d | 2014-10-31 | 2014-10-31 | 123 | 43d |  |  |  | Sprint 2 |
